Schedule from OmniPlan.
Project start 2017-11-01

## Resources

| Resource | Group |
| --- | --- |
| 资源 1 | staff |
| 设备 1 | equipment |
| 素材 1 | material |
| 群组 1 | group |
| 易浩 | staff |
| 喻备 | staff |
| 廖志远 | staff |
| 邹玉婷 | staff |
| 许胜鹏 | staff |
| 马胜 | staff |
| 杨利东 | staff |

## Schedule

| ID | Task | Predecessors | Complete | Constraint | Resources | Work | Actual work |
| --- | --- | --- | --- | --- | --- | --- | --- |
| 1 | 竞彩实单推荐上线（抄单项目） |  | 100% |  | 易浩 | 40h | 40h |
| 2 | 竞彩实单推荐上线（抄单项目） |  | 100% |  | 廖志远 | 16h | 16h |
| 3 | 抄单提测后BUG修复 | 1 | 94% |  | 易浩; 廖志远 | 48h | 45h |
| 4 | 新疆11选5 | 2 | 100% |  | 廖志远 | 4h | 4h |
| 5 | 江西11选5 | 4 | 100% |  | 廖志远 | 4h | 4h |
| 6 | 彩种停售分平台 | 5 | 100% |  | 廖志远 | 16h | 16h |
| 7 | 快捷投注 - 竞彩足球H5快投 | 6 | 86% |  | 廖志远 | 80h | 68.75h |
| 8 | 江西快3 | 1 | 100% |  | 易浩 | 16h | 16h |
| 9 | 往期对阵数据分析 - 赛事赛选逻辑，SP值选择 | 8, 3 | 71% |  | 易浩 | 40h | 28.5h |
| 10 | 数字彩URL传递号码 | 9 |  |  | 易浩 | 80h |  |
| 11 | H5调用APP原生交互 |  | 86% | start no earlier than 2017-11-07 | 喻备 | 64h | 55h |
| 12 | 浦发银行微信H5对接 - 支付,充值 |  | 100% |  | 邹玉婷 | 8h | 8h |
| 13 | 抽奖活动页面奖品图片配置 | 12 | 100% |  | 邹玉婷 | 8h | 8h |
| 14 | 消息落地页 | 13 | 100% |  | 廖志远 | 24h | 24h |
| 15 | H5页面回退优化 | 14 | 78% |  | 邹玉婷 | 16h | 12.5h |
| 16 | 帮助中心，APP嵌套 | 15 | 100% |  | 邹玉婷 | 72h | 72h |
| 17 | 首页弹出广告 |  | 100% |  | 许胜鹏 | 12h | 12h |
| 18 | 11选5新用户指导页 | 17 | 100% |  | 许胜鹏 | 4h | 4h |
| 19 | 11选5乐选新玩法指引页 | 18 | 100% |  | 许胜鹏 | 4h | 4h |
| 20 | 方案详情增加抄单显示 - 临时需求 | 19 | 62% | start no earlier than 2017-11-15 | 许胜鹏 | 24h | 15h |
| 21 | 方案详情样式修改 | 19 | 95% |  | 许胜鹏 | 104h | 99.25h |
| 22 | 出票详情 |  | 100% |  | 杨利东 | 104h | 104h |
| 23 | 赛事详情 - 足球 |  | 92% |  | 马胜 | 120h | 111h |
| 24 | 代码结构调整 - 人均5天 |  |  |  | 易浩; 喻备; 廖志远; 邹玉婷; 许胜鹏; 杨利东 | 240h |  |
