Schedule from OmniPlan.
Project start 2018-01-03

## Resources

| Resource | Group |
| --- | --- |
| Resource 1 | staff |
| Equipment 1 | equipment |
| Material 1 | material |
| Group 1 | group |
| 易浩 | staff |
| 喻备 | staff |
| 邹玉婷 | staff |
| 许胜鹏 | staff |
| 杨利东 | staff |
| 廖志远 | staff |

## Schedule

| ID | WBS | Task | Predecessors | Constraint | Resources | Work |
| --- | --- | --- | --- | --- | --- | --- |
| 1 | 1 | **刘鹏** |  |  |  |  |
| 2 | 1.1 | 广西11选5 |  |  | 廖志远 | 8h |
| 3 | 1.2 | 新疆11选5新增乐选玩法 | 2 |  | 廖志远 | 8h |
| 4 | 1.3 | 年会活动 | 14 |  | 易浩 | 40h |
| 5 | 1.4 | 年会活动BUG修复 | 4 |  | 易浩 | 24h |
| 6 | 1.5 | 方案详情增加玩法说明 | 19 |  | 邹玉婷 | 8h |
| 7 | 2 | **覃海飞** |  |  |  |  |
| 8 | 2.1 | 竞彩篮球玩法推荐 - 抄单三期 | 3 |  | 廖志远 | 32h |
| 9 | 2.2 | 竞彩足球一比分推荐 - 抄单三期 | 8 |  | 廖志远 | 48h |
| 10 | 2.3 | 赛事详情 |  |  | 杨利东 | 88h |
| 11 | 2.4 | 竞技彩其他玩法新增赛事详情入口 | 10 |  | 杨利东 | 24h |
| 12 | 2.5 | M串N | 5 | start no earlier than 2018-01-24 | 易浩 | 56h |
| 13 | 3 | **金宝华** |  |  |  |  |
| 14 | 3.1 | 埋点 |  |  | 易浩 | 56h |
| 15 | 3.2 | 追号计划订单新增追号失败状态 |  |  | 许胜鹏 | 24h |
| 16 | 3.3 | 移动端分享功能 | 15 |  | 许胜鹏 | 32h |
| 17 | 3.4 | 移动端红包样式调整优化 | 16 |  | 许胜鹏 | 16h |
| 18 | 3.5 | 兑换优惠券功能 | 17 |  | 许胜鹏 | 20h |
| 19 | 3.6 | 消息中心接口优化 | 26 |  | 邹玉婷 | 16h |
| 20 | 4 | **刘琼** |  |  |  |  |
| 21 | 4.1 | 实名认证从注册和购彩时移除，在提款时验证 |  |  | 邹玉婷 | 24h |
| 22 | 5 | **廖宝深** |  |  |  |  |
| 23 | 5.1 | CMS验证码获取次数清空 | 21 |  | 邹玉婷 | 12h |
| 24 | 5.2 | 验证码输入限制 | 23 |  | 邹玉婷 | 8h |
| 25 | 5.3 | CMS账户禁用 | 24 |  | 邹玉婷 | 12h |
| 26 | 5.4 | 用户唤醒推送 | 25 |  | 邹玉婷 | 16h |
| 27 | 5.5 | H5公众号登录 |  |  | 喻备 | 40h |
| 28 | 5.6 | H5公众号支付 | 27 |  | 喻备 | 32h |
| 29 | 5.7 | 移动支付改版 | 28 |  | 喻备 | 80h |
| 30 | 5.8 | 浦发银行微信公众号支付 |  |  | 喻备 | 8h |
| 31 | 5.9 | 威富通光大渠道H5 | 30 |  | 喻备 | 8h |
| 32 | 5.10 | 威富通光大渠道微信公众号支付 | 31 |  | 喻备 | 8h |
| 33 | 5.11 | 威富通光大渠道QQH5 | 32 |  | 喻备 | 8h |
| 34 | 5.12 | 威富通中心渠道微信H5 | 33 |  | 喻备 | 8h |
| 35 | 5.13 | 威富通中心渠道微信公众号 | 34 |  | 喻备 | 8h |
| 36 | 5.14 | 威富通中心渠道2.微信H5 | 35 |  | 喻备 | 8h |
| 37 | 5.15 | 威富通中心渠道2.微信公众号支付 | 36 |  | 喻备 | 8h |
| 38 | 5.16 | 汇潮银行支付 | 37 |  | 喻备 | 8h |

Notes:
- 16: 5 / 号下班 / UI / 设计图出来
- 17: 10 / 号出接口
- 18: 12 / 号出接口
