# H5

Schedule from MS Project, 2017-05-04 to 2017-05-20, A marks actual dates.

## Calendars

- 标准: Mon-Fri 08:00-12:00, 13:00-17:00; Sat-Sun off. Exceptions (off unless hours are given): 2017-05-07 08:00-12:00, 13:00-17:00 (7号加班), 2017-05-14 08:00-12:00, 13:00-17:00 (14号加班), 2017-05-20 08:00-12:00, 13:00-17:00 (20号加班).

## Resources

| Resource |
| --- |
| 易浩 |
| 喻备 |
| 廖志远 |
| 杨利东 |
| 姚蓝 |

## Schedule

| ID | WBS | Task | Type | Duration | Start | Finish | Predecessors | Complete | Remaining | Total slack | Constraint | Resources | Work | Actual work |
| --- | --- | --- | --- | --- | --- | --- | --- | --- | --- | --- | --- | --- | --- | --- |
| 1 | 1 | **首页** |  | 5d? | 2017-05-16 | 2017-05-20 |  |  |  | 0d |  |  | 80h |  |
| 2 | 1.1 | 优惠详情页面开发 |  | 2d | 2017-05-16 | 2017-05-17 | 10 |  |  | 0d |  | 姚蓝 | 16h |  |
| 3 | 1.2 | 彩种服务页面开发 |  | 2d | 2017-05-16 | 2017-05-17 | 10 |  |  | 0d |  | 姚蓝 | 16h |  |
| 4 | 1.3 | 接口联调 |  | 3d? | 2017-05-18 | 2017-05-20 | 2, 3 |  |  | 0d |  | 姚蓝 | 24h |  |
| 5 | 1.4 | 交互开发 |  | 3d? | 2017-05-18 | 2017-05-20 | 2, 3 |  |  | 0d |  | 姚蓝 | 24h |  |
| 6 | 2 | **登录注册** |  | 2d | 2017-05-04 A | 2017-05-05 A |  | 100% |  |  |  |  | 16h | 16h |
| 7 | 2.1 | BUG修复 |  | 2d | 2017-05-04 A | 2017-05-05 A |  | 100% |  |  |  | 姚蓝 | 16h | 16h |
| 8 | 3 | **资讯** |  | 8d | 2017-05-07 A | 2017-05-15 |  | 56% | 3.5d | 0d |  |  | 64h | 36h |
| 9 | 3.1 | 交互开发 |  | 5d | 2017-05-07 A | 2017-05-11 | 7 | 90% | 0.5d | 0d |  | 姚蓝 | 40h | 36h |
| 10 | 3.2 | 修复bug |  | 3d | 2017-05-12 | 2017-05-15 | 9 |  |  | 0d |  | 姚蓝 | 24h |  |
| 11 | 4 | 竞彩篮球 | manual | 1d? | 2017-05-04 | 2017-05-04 |  |  |  |  |  |  |  |  |
| 12 | 5 | **竞彩足球** |  | 15d? | 2017-05-04 A | 2017-05-20 |  | 50% | 7.55d? | 0d |  |  | 296h | 119.2h |
| 13 | 5.1 | **单关** |  | 1d | 2017-05-04 A | 2017-05-04 A |  | 100% |  |  |  |  | 8h | 8h |
| 14 | 5.1.1 | 数据渲染 |  | 1d | 2017-05-04 A | 2017-05-04 A |  | 100% |  |  | finish no earlier than 2017-05-04 | 易浩 | 8h | 8h |
| 15 | 5.2 | **单场致胜** |  | 1d? | 2017-05-04 A | 2017-05-04 A |  | 100% |  |  |  |  | 8h | 8h |
| 16 | 5.2.1 | 数据渲染 |  | 1d? | 2017-05-04 A | 2017-05-04 A |  | 100% |  |  |  | 易浩 | 8h | 8h |
| 17 | 5.3 | **2选1** |  | 1d | 2017-05-05 A | 2017-05-05 A |  | 100% |  |  |  |  | 8h | 8h |
| 18 | 5.3.1 | 数据渲染 |  | 1d | 2017-05-05 A | 2017-05-05 A | 16 | 100% |  |  |  | 易浩 | 8h | 8h |
| 19 | 5.4 | **弹层选择彩果** |  | 2d? | 2017-05-05 A | 2017-05-07 A |  | 100% |  |  |  |  | 24h | 24h |
| 20 | 5.4.1 | 数据渲染 | manual | 2d | 2017-05-05 A | 2017-05-06 A |  | 100% |  |  |  | 易浩 | 16h | 16h |
| 21 | 5.4.2 | 逻辑开发 | manual | 1d | 2017-05-07 A | 2017-05-07 A |  | 100% |  |  |  | 易浩 | 8h | 8h |
| 22 | 5.5 | **混合过关** |  | 3d? | 2017-05-04 A | 2017-05-07 A |  | 100% |  |  |  |  | 40h | 40h |
| 23 | 5.5.1 | 胜平负 | manual | 1d | 2017-05-04 A | 2017-05-04 A |  | 100% |  |  |  | 易浩 | 8h | 8h |
| 24 | 5.5.2 | 总进球数 | manual | 1d | 2017-05-04 A | 2017-05-04 A |  | 100% |  |  |  | 喻备 | 8h | 8h |
| 25 | 5.5.3 | 比分 | manual | 1d | 2017-05-05 A | 2017-05-05 A | 24 | 100% |  |  |  | 喻备 | 8h | 8h |
| 26 | 5.5.4 | 半全场 | manual | 1d | 2017-05-06 A | 2017-05-06 A | 25 | 100% |  |  |  | 喻备 | 8h | 8h |
| 27 | 5.5.5 | 混合过关 | manual | 1d | 2017-05-07 A | 2017-05-07 A | 26 | 100% |  |  |  | 易浩 | 8h | 8h |

| ID | WBS | Task | Type | Duration | Start | Finish | Predecessors | Complete | Remaining | Total slack | Constraint | Resources | Work | Actual work |
| --- | --- | --- | --- | --- | --- | --- | --- | --- | --- | --- | --- | --- | --- | --- |
| 28 | 5.6 | **投注下单** |  | 5d | 2017-05-08 A | 2017-05-12 |  | 78% | 1.1d | 0d |  |  | 40h | 31.2h |
| 29 | 5.6.1 | 交互逻辑开发 | manual | 3d | 2017-05-08 A | 2017-05-10 A | 27 | 100% |  |  |  | 易浩 | 24h | 24h |
| 30 | 5.6.2 | 算法设计 | manual | 2d | 2017-05-11 A | 2017-05-12 | 29 | 45% | 1.1d |  | start no earlier than 2017-05-08 | 易浩 | 16h | 7.2h |
| 31 | 5.7 | **奖金优化** |  | 3d? | 2017-05-09 | 2017-05-11 |  |  |  | 0d |  |  | 56h |  |
| 32 | 5.7.1 | 数据渲染 | manual | 2d? | 2017-05-09 | 2017-05-10 |  |  |  |  |  | 易浩 | 16h |  |
| 33 | 5.7.2 | 算法设计 | manual | 3d? | 2017-05-09 | 2017-05-11 |  |  |  |  |  | 易浩 | 24h |  |
| 34 | 5.7.3 | 交互开发 | manual | 2d? | 2017-05-09 | 2017-05-10 |  |  |  |  |  | 易浩 | 16h |  |
| 35 | 5.8 | BUG修复 | manual | 7d | 2017-05-14 | 2017-05-20 | 30 |  |  |  |  | 易浩; 喻备 | 112h |  |
| 36 | 6 | **双色球** |  | 4d | 2017-05-04 A | 2017-05-08 A |  | 100% |  |  |  |  | 32h | 32h |
| 37 | 6.1 | BUG修复 |  | 2d | 2017-05-04 A | 2017-05-05 A |  | 100% |  |  |  | 廖志远 | 16h | 16h |
| 38 | 6.2 | 二轮BUG修复 |  | 2d | 2017-05-07 A | 2017-05-08 A | 37 | 100% |  |  |  | 廖志远 | 16h | 16h |
| 39 | 7 | **11选5** |  | 4d | 2017-05-04 A | 2017-05-08 A |  | 100% |  |  |  |  | 32h | 32h |
| 40 | 7.1 | BUG修复 |  | 2d | 2017-05-04 A | 2017-05-05 A |  | 100% |  |  |  | 廖志远 | 16h | 16h |
| 41 | 7.2 | 二轮BUG修复 |  | 2d | 2017-05-07 A | 2017-05-08 A | 40 | 100% |  |  |  | 廖志远 | 16h | 16h |
| 42 | 8 | **大乐透** |  | 11d | 2017-05-09 A | 2017-05-20 |  | 25% | 8.25d | 0d |  |  | 88h | 22h |
| 43 | 8.1 | 页面开发 |  | 2d | 2017-05-09 A | 2017-05-10 A | 41 | 100% |  |  |  | 廖志远 | 16h | 16h |
| 44 | 8.2 | 业务逻辑 |  | 3d | 2017-05-11 A | 2017-05-14 | 43 | 25% | 2.25d | 0d |  | 廖志远 | 24h | 6h |
| 45 | 8.3 | 接口联调 |  | 3d | 2017-05-15 | 2017-05-17 | 44 |  |  | 0d |  | 廖志远 | 24h |  |
| 46 | 8.4 | 测试BUG修复 |  | 3d | 2017-05-18 | 2017-05-20 | 45 |  |  | 0d |  | 廖志远 | 24h |  |
| 47 | 9 | 公共样式 | manual | 1d? | 2017-05-04 | 2017-05-04 |  |  |  |  |  |  |  |  |
| 48 | 10 | **公用组件** |  | 1d | 2017-05-06 A | 2017-05-07 A |  | 100% |  |  |  |  | 32h | 32h |
| 49 | 10.1 | 弹窗 | manual | 1d | 2017-05-06 A | 2017-05-06 A |  | 100% |  |  |  | 喻备 | 8h | 8h |
| 50 | 10.2 | 投注 | manual | 2d | 2017-05-06 A | 2017-05-07 A |  | 100% |  |  |  | 喻备 | 16h | 16h |
| 51 | 10.3 | 自定义键盘 | manual | 1d | 2017-05-06 A | 2017-05-06 A |  | 100% |  |  |  | 喻备 | 8h | 8h |

| ID | WBS | Task | Type | Duration | Start | Finish | Predecessors | Complete | Remaining | Total slack | Resources | Work | Actual work |
| --- | --- | --- | --- | --- | --- | --- | --- | --- | --- | --- | --- | --- | --- |
| 52 | 11 | **安全支付** |  | 12d | 2017-05-08 A | 2017-05-20 |  | 17% | 10d | 0d |  | 96h | 16h |
| 53 | 11.1 | 页面开发 | manual | 1d | 2017-05-08 A | 2017-05-08 A | 26 | 100% |  |  | 喻备 | 8h | 8h |
| 54 | 11.2 | 支付逻辑开发 | manual | 2d | 2017-05-09 A | 2017-05-10 | 53 | 50% | 1d |  | 喻备 | 16h | 8h |
| 55 | 11.3 | 支付接口联调 | manual | 2d | 2017-05-11 | 2017-05-12 | 54 |  |  |  | 喻备 | 16h |  |
| 56 | 11.4 | 测试BUG修复 | manual | 7d | 2017-05-14 | 2017-05-20 | 55 |  |  |  | 喻备 | 56h |  |
| 57 | 12 | **个人中心** |  | 6d | 2017-05-04 A | 2017-05-10 |  | 33% | 4d | 9d |  | 48h | 16h |
| 58 | 12.1 | 功能开发 |  | 2d | 2017-05-04 A | 2017-05-05 A |  | 100% |  |  | 杨利东 | 16h | 16h |
| 59 | 12.2 | BUG修复 |  | 4d | 2017-05-07 | 2017-05-10 | 58 |  |  | 9d | 杨利东 | 32h |  |
| 60 | 13 | **方案详情** |  | 11d | 2017-05-09 A | 2017-05-20 |  | 91% | 0.94d | 0d |  | 280h | 256h |
| 61 | 13.1 | 数字彩 | manual | 8d | 2017-05-09 A | 2017-05-17 A |  | 100% |  |  | 杨利东 | 64h | 64h |
| 62 | 13.2 | 竞技彩 | manual | 8d | 2017-05-09 A | 2017-05-17 A |  | 100% |  |  | 杨利东 | 64h | 64h |
| 63 | 13.3 | 自选追号 | manual | 8d | 2017-05-09 A | 2017-05-17 A |  | 100% |  |  | 杨利东 | 64h | 64h |
| 64 | 13.4 | 14场 | manual | 8d | 2017-05-09 A | 2017-05-17 A |  | 100% |  |  | 杨利东 | 64h | 64h |
| 65 | 13.5 | 测试BUG修复 | manual | 3d | 2017-05-18 | 2017-05-20 | 64 |  |  |  | 杨利东 | 24h |  |
