# 二期项目规划

Schedule from MS Project, 2017-06-26 to 2017-08-02, A marks actual dates.

## Calendars

- 单休: Mon-Sat 08:00-12:00, 13:00-17:00; Sun off.

## Resources

| Resource |
| --- |
| 姚蓝 |
| 易浩 |
| 廖志远 |
| 杨利东 |
| 喻备 |
| 许胜鹏 |
| 邹玉婷 |

## Schedule

| ID | WBS | Task | Duration | Start | Finish | Predecessors | Complete | Remaining | Total slack | Free slack | Constraint | Resources | Work | Actual work |
| --- | --- | --- | --- | --- | --- | --- | --- | --- | --- | --- | --- | --- | --- | --- |
| 1 | 1 | 首页登录注册资讯BUG修复 | 5d | 2017-07-03 | 2017-07-07 |  |  |  | 9d | 0d | finish no earlier than 2017-07-07 | 姚蓝 | 40h |  |
| 2 | 2 | **资讯** | 13d | 2017-07-08 | 2017-07-22 |  |  |  | 9d |  |  | 姚蓝 | 208h |  |
| 3 | 2.1 | 页面开发 | 3d | 2017-07-08 | 2017-07-11 | 1 |  |  | 9d | 0d | start no earlier than 2017-07-08 | 姚蓝 | 24h |  |
| 4 | 2.2 | 资讯逻辑开发 | 10d | 2017-07-12 | 2017-07-22 | 3 |  |  | 9d |  | start no earlier than 2017-07-12 | 姚蓝 | 80h |  |
| 6 | 3 | 业务代码熟悉 | 5d | 2017-07-04 | 2017-07-08 |  |  |  | 0d |  | finish no earlier than 2017-07-08 | 邹玉婷 | 40h |  |
| 7 | 4 | **登录注册** | 12d | 2017-07-10 | 2017-07-22 | 6 |  |  | 0d |  |  | 邹玉婷 | 264h |  |
| 8 | 4.1 | 页面重构 | 3d | 2017-07-10 | 2017-07-12 |  |  |  | 0d |  | start no earlier than 2017-07-10 | 邹玉婷 | 24h |  |
| 9 | 4.2 | **逻辑开发** | 9d | 2017-07-13 | 2017-07-22 |  |  |  | 0d |  |  | 邹玉婷 | 144h |  |
| 10 | 4.2.1 | 登陆 | 1.5d | 2017-07-13 | 2017-07-14 | 8 |  |  | 0d |  |  | 邹玉婷 | 12h |  |
| 11 | 4.2.2 | 注册 | 1d | 2017-07-14 | 2017-07-15 | 10 |  |  | 0d |  |  | 邹玉婷 | 8h |  |
| 12 | 4.2.3 | 找回密码 | 1.5d | 2017-07-15 | 2017-07-17 | 11 |  |  | 0d |  |  | 邹玉婷 | 12h |  |
| 13 | 4.2.4 | 重置密码 | 1d | 2017-07-18 | 2017-07-18 | 12 |  |  | 0d |  |  | 邹玉婷 | 8h |  |
| 14 | 4.2.5 | 找回方式 | 1d | 2017-07-19 | 2017-07-19 | 13 |  |  | 0d |  |  | 邹玉婷 | 8h |  |
| 15 | 4.2.6 | 创建账号密码 | 1d | 2017-07-20 | 2017-07-20 | 14 |  |  | 0d |  |  | 邹玉婷 | 8h |  |
| 16 | 4.2.7 | 实名认证 | 1d | 2017-07-21 | 2017-07-21 | 15 |  |  | 0d |  |  | 邹玉婷 | 8h |  |
| 17 | 4.2.8 | 邮箱登记 | 1d | 2017-07-22 | 2017-07-22 | 16 |  |  | 0d |  |  | 邹玉婷 | 8h |  |
| 18 | 5 | **首页** | 9d | 2017-07-24 | 2017-08-02 |  |  |  | 0d |  |  | 邹玉婷 | 144h |  |
| 19 | 5.1 | 页面开发 | 2d | 2017-07-24 | 2017-07-25 | 17 |  |  | 0d |  |  | 邹玉婷 | 16h |  |
| 20 | 5.2 | 彩种逻辑 | 4d | 2017-07-26 | 2017-07-29 | 19 |  |  | 0d |  |  | 邹玉婷 | 32h |  |
| 21 | 5.3 | 资讯逻辑 | 3d | 2017-07-31 | 2017-08-02 | 20 |  |  | 0d |  |  | 邹玉婷 | 24h |  |
| 23 | 6 | 支付BUG修复 | 3d | 2017-06-26 A | 2017-06-28 A |  | 100% |  |  |  |  | 喻备 | 24h | 24h |
| 24 | 7 | 高清解决方案BUG修复 | 3d | 2017-06-28 A | 2017-06-30 A |  | 100% |  |  |  | start no earlier than 2017-06-28 | 喻备 | 24h | 24h |
| 25 | 8 | **福彩3D** | 22d | 2017-07-01 A | 2017-07-26 |  | 18% | 18d | 6d |  |  | 喻备 | 496h | 64h |
| 26 | 8.1 | 页面开发 | 4d | 2017-07-01 A | 2017-07-05 A | 24 | 100% |  |  |  |  | 喻备 | 32h | 32h |

| ID | WBS | Task | Duration | Start | Finish | Predecessors | Complete | Remaining | Total slack | Free slack | Constraint | Resources | Work | Actual work |
| --- | --- | --- | --- | --- | --- | --- | --- | --- | --- | --- | --- | --- | --- | --- |
| 27 | 8.2 | **逻辑开发** | 18d | 2017-07-06 | 2017-07-26 |  |  |  | 6d |  |  | 喻备 | 288h |  |
| 28 | 8.2.1 | 公共组件开发 | 3d | 2017-07-06 | 2017-07-08 | 26 |  |  | 3d | 0d |  | 喻备 | 24h |  |
| 29 | 8.2.2 | 直选 | 2d | 2017-07-10 | 2017-07-11 | 28 |  |  | 3d | 0d |  | 喻备 | 16h |  |
| 30 | 8.2.3 | 直选和值 | 2d | 2017-07-12 | 2017-07-13 | 29 |  |  | 3d | 0d |  | 喻备 | 16h |  |
| 31 | 8.2.4 | 组三直选 | 2d | 2017-07-14 | 2017-07-15 | 30 |  |  | 3d | 0d |  | 喻备 | 16h |  |
| 32 | 8.2.5 | 组三和值 | 2d | 2017-07-17 | 2017-07-18 | 31 |  |  | 3d | 0d |  | 喻备 | 16h |  |
| 33 | 8.2.6 | 组六包号 | 2d | 2017-07-19 | 2017-07-20 | 32 |  |  | 3d | 0d |  | 喻备 | 16h |  |
| 34 | 8.2.7 | 组六和值 | 2d | 2017-07-21 | 2017-07-22 | 33 |  |  | 3d | 0d |  | 喻备 | 16h |  |
| 35 | 8.2.8 | 组六胆拖 | 1d | 2017-07-24 | 2017-07-24 | 34 |  |  | 3d | 0d |  | 喻备 | 8h |  |
| 36 | 8.2.9 | 追号 | 1d | 2017-07-25 | 2017-07-25 | 35 |  |  | 3d | 0d |  | 喻备 | 8h |  |
| 37 | 8.2.10 | 机选 | 1d | 2017-07-26 | 2017-07-26 | 36 |  |  | 3d |  |  | 喻备 | 8h |  |
| 38 | 9 | 团队日常管理 | 27d | 2017-06-26 | 2017-07-26 |  |  |  | 3d |  | start no earlier than 2017-06-26 | 喻备 | 216h |  |
| 40 | 10 | 竞彩足球BUG修复 | 4d | 2017-06-26 A | 2017-06-29 A |  | 100% |  |  |  |  | 易浩 | 32h | 32h |
| 41 | 11 | **竞彩足球** | 17d | 2017-06-28 A | 2017-07-17 |  | 16% | 14.25d | 6d |  |  | 易浩 | 408h | 66h |
| 42 | 11.1 | **奖金优化** | 11d | 2017-06-28 A | 2017-07-10 |  | 25% | 8.25d | 6d |  |  | 易浩 | 176h | 44h |
| 43 | 11.1.1 | 投注组合 | 2d | 2017-06-28 A | 2017-06-29 |  | 75% | 0.5d | 1.25d | 0d | start no earlier than 2017-06-28 | 易浩 | 16h | 12h |
| 44 | 11.1.2 | 平均优化 | 5d | 2017-06-30 A | 2017-07-05 | 43 | 25% | 3.75d | 6d | 0d |  | 易浩 | 40h | 10h |
| 45 | 11.1.3 | 博冷优化 | 2d | 2017-07-06 | 2017-07-07 | 44 |  |  | 3d | 0d |  | 易浩 | 16h |  |
| 46 | 11.1.4 | 博热优化 | 2d | 2017-07-08 | 2017-07-10 | 45 |  |  | 3d | 0d |  | 易浩 | 16h |  |
| 47 | 11.2 | **单场致胜** | 6d | 2017-07-11 | 2017-07-17 |  |  |  | 6d |  |  | 易浩 | 96h |  |
| 48 | 11.2.1 | 场次配对 | 3d | 2017-07-11 | 2017-07-13 | 46 |  |  | 3d | 0d |  | 易浩 | 24h |  |
| 49 | 11.2.2 | 平均优化 | 1d | 2017-07-14 | 2017-07-14 | 48 |  |  | 3d | 0d |  | 易浩 | 8h |  |
| 50 | 11.2.3 | 投注下单 | 2d | 2017-07-15 | 2017-07-17 | 49 |  |  | 3d | 0d |  | 易浩 | 16h |  |
| 51 | 12 | **老足彩** | 8d | 2017-07-18 | 2017-07-26 |  |  |  | 6d |  |  | 易浩 | 176h |  |
| 52 | 12.1 | 页面开发 | 2d | 2017-07-18 | 2017-07-19 | 50 |  |  | 3d | 0d |  | 易浩 | 16h |  |

| ID | WBS | Task | Type | Duration | Start | Finish | Predecessors | Complete | Remaining | Total slack | Free slack | Constraint | Resources | Work | Actual work |
| --- | --- | --- | --- | --- | --- | --- | --- | --- | --- | --- | --- | --- | --- | --- | --- |
| 53 | 12.2 | **14场胜负彩** |  | 3d | 2017-07-20 | 2017-07-22 |  |  |  | 6d |  |  | 易浩 | 48h |  |
| 54 | 12.2.1 | 彩果选择 |  | 1.5d | 2017-07-20 | 2017-07-21 | 52 |  |  | 3d | 0d |  | 易浩 | 12h |  |
| 55 | 12.2.2 | 投注下单 |  | 1.5d | 2017-07-21 | 2017-07-22 | 54 |  |  | 3d | 0d |  | 易浩 | 12h |  |
| 56 | 12.3 | **任选9场** |  | 3d | 2017-07-24 | 2017-07-26 |  |  |  | 6d |  |  | 易浩 | 48h |  |
| 57 | 12.3.1 | 彩果选择 |  | 2d | 2017-07-24 | 2017-07-25 | 55 |  |  | 3d | 0d |  | 易浩 | 16h |  |
| 58 | 12.3.2 | 投注下单 |  | 1d | 2017-07-26 | 2017-07-26 | 57 |  |  | 3d |  |  | 易浩 | 8h |  |
| 60 | 13 | 11选5双色球BUG修复 |  | 5d | 2017-06-26 A | 2017-06-30 A |  | 100% |  |  |  |  | 廖志远 | 40h | 40h |
| 61 | 14 | **11选5** |  | 21d | 2017-07-01 A | 2017-07-25 |  | 10% | 19d | 7d |  |  | 廖志远 | 472h | 32h |
| 62 | 14.1 | 页面开发 |  | 4d | 2017-07-01 A | 2017-07-05 | 60 | 50% | 2d | 7d | 0d |  | 廖志远 | 32h | 16h |
| 63 | 14.2 | **逻辑开发** |  | 17d | 2017-07-06 | 2017-07-25 |  |  |  | 7d |  |  | 廖志远 | 272h |  |
| 64 | 14.2.1 | 任二投注 |  | 2d | 2017-07-06 | 2017-07-07 | 62 |  |  | 7d | 0d |  | 廖志远 | 16h |  |
| 65 | 14.2.2 | 任三投注 |  | 2d | 2017-07-08 | 2017-07-10 | 64 |  |  | 7d | 0d |  | 廖志远 | 16h |  |
| 66 | 14.2.3 | 任四投注 |  | 2d | 2017-07-11 | 2017-07-12 | 65 |  |  | 7d | 0d |  | 廖志远 | 16h |  |
| 67 | 14.2.4 | 任五投注 |  | 1d | 2017-07-13 | 2017-07-13 | 66 |  |  | 7d | 0d |  | 廖志远 | 8h |  |
| 68 | 14.2.5 | 任六投注 |  | 1d | 2017-07-14 | 2017-07-14 | 67 |  |  | 7d | 0d |  | 廖志远 | 8h |  |
| 69 | 14.2.6 | 任七投注 |  | 1d | 2017-07-15 | 2017-07-15 | 68 |  |  | 7d | 0d |  | 廖志远 | 8h |  |
| 70 | 14.2.7 | 任八投注 |  | 1d | 2017-07-17 | 2017-07-17 | 69 |  |  | 7d | 0d |  | 廖志远 | 8h |  |
| 71 | 14.2.8 | 前一投注 |  | 1d | 2017-07-18 | 2017-07-18 | 70 |  |  | 7d | 0d |  | 廖志远 | 8h |  |
| 72 | 14.2.9 | 前二组选投注 |  | 1d | 2017-07-19 | 2017-07-19 | 71 |  |  | 7d | 0d |  | 廖志远 | 8h |  |
| 73 | 14.2.10 | 前二直选投注 |  | 1d | 2017-07-20 | 2017-07-20 | 72 |  |  | 7d | 0d |  | 廖志远 | 8h |  |
| 74 | 14.2.11 | 前三组选投注 |  | 1d | 2017-07-21 | 2017-07-21 | 73 |  |  | 7d | 0d |  | 廖志远 | 8h |  |
| 75 | 14.2.12 | 前三直选投注 |  | 1d | 2017-07-22 | 2017-07-22 | 74 |  |  | 7d | 0d |  | 廖志远 | 8h |  |
| 76 | 14.2.13 | 号码栏逻辑 |  | 1d | 2017-07-24 | 2017-07-24 | 75 |  |  | 7d | 0d |  | 廖志远 | 8h |  |
| 77 | 14.2.14 | 未支付详情 |  | 1d | 2017-07-25 | 2017-07-25 | 76 |  |  | 7d |  |  | 廖志远 | 8h |  |
| 79 | 15 | 个人中心BUG修复 | manual | 11d | 2017-06-26 A | 2017-07-07 A |  | 100% |  |  |  | start no earlier than 2017-06-26 | 杨利东 | 88h | 88h |

| ID | WBS | Task | Type | Duration | Start | Finish | Predecessors | Complete | Remaining | Total slack | Free slack | Constraint | Resources | Work | Actual work |
| --- | --- | --- | --- | --- | --- | --- | --- | --- | --- | --- | --- | --- | --- | --- | --- |
| 80 | 16 | **分发系统** |  | 19d | 2017-07-08 | 2017-07-29 |  |  |  | 0d |  |  | 杨利东 | 304h |  |
| 81 | 16.1 | H5去头去尾 | manual | 3d | 2017-07-08 | 2017-07-11 | 79 |  |  |  |  | start no earlier than 2017-06-30 | 杨利东 | 24h |  |
| 82 | 16.2 | 登陆模块 |  | 3d | 2017-07-12 | 2017-07-14 | 81 |  |  | 3d | 0d |  | 杨利东 | 24h |  |
| 83 | 16.3 | 第三方登陆接口 |  | 13d | 2017-07-15 | 2017-07-29 | 82 |  |  | 3d |  |  | 杨利东 | 104h |  |
| 85 | 17 | **大乐透** |  | 24d | 2017-06-30 | 2017-07-27 |  |  |  | 5d |  |  | 杨利东 | 512h |  |
| 86 | 17.1 | 页面开发 |  | 8d | 2017-06-30 | 2017-07-08 |  |  |  | 5d | 0d | finish no earlier than 2017-07-08 | 杨利东 | 64h |  |
| 87 | 17.2 | **逻辑开发** |  | 16d | 2017-07-10 | 2017-07-27 |  |  |  | 5d |  |  | 杨利东 | 256h |  |
| 88 | 17.2.1 | 普通投注 |  | 3d | 2017-07-10 | 2017-07-12 | 86 |  |  | 5d | 0d |  | 杨利东 | 24h |  |
| 89 | 17.2.2 | 胆拖投注 |  | 3d | 2017-07-13 | 2017-07-15 | 88 |  |  | 5d | 0d |  | 杨利东 | 24h |  |
| 90 | 17.2.3 | 定胆杀号 |  | 3d | 2017-07-17 | 2017-07-19 | 89 |  |  | 5d | 0d |  | 杨利东 | 24h |  |
| 91 | 17.2.4 | 追号 |  | 1d | 2017-07-20 | 2017-07-20 | 90 |  |  | 5d | 0d |  | 杨利东 | 8h |  |
| 92 | 17.2.5 | 机选 |  | 1d | 2017-07-21 | 2017-07-21 | 91 |  |  | 5d | 0d |  | 杨利东 | 8h |  |
| 93 | 17.2.6 | 号码栏 |  | 1d | 2017-07-22 | 2017-07-22 | 92 |  |  | 5d | 0d |  | 杨利东 | 8h |  |
| 94 | 17.2.7 | 开奖历史 |  | 1d | 2017-07-24 | 2017-07-24 | 93 |  |  | 5d | 0d |  | 杨利东 | 8h |  |
| 95 | 17.2.8 | 操作栏 |  | 1d | 2017-07-25 | 2017-07-25 | 94 |  |  | 5d | 0d |  | 杨利东 | 8h |  |
| 96 | 17.2.9 | 未支付详情 |  | 1d | 2017-07-26 | 2017-07-26 | 95 |  |  | 5d | 0d |  | 杨利东 | 8h |  |
| 97 | 17.2.10 | 遗漏数据，冷数据，概率数据 |  | 1d | 2017-07-27 | 2017-07-27 | 96 |  |  | 5d |  |  | 杨利东 | 8h |  |
| 99 | 18 | **个人中心样式重构** |  | 15d | 2017-06-30 A | 2017-07-17 |  | 85% | 2.31d | 14d |  |  | 许胜鹏 | 224h | 189.54h |
| 100 | 18.1 | 账户模块 |  | 3d | 2017-06-30 A | 2017-07-03 A |  | 100% |  |  |  | start no earlier than 2017-06-30 | 许胜鹏 | 24h | 24h |
| 101 | 18.2 | 方案详情模块 |  | 4d | 2017-07-06 A | 2017-07-10 A | 100 | 100% |  |  |  |  | 许胜鹏 | 32h | 32h |
| 102 | 18.3 | 充值支付 |  | 4d | 2017-07-11 A | 2017-07-14 A | 101 | 100% |  |  |  |  | 许胜鹏 | 32h | 32h |
| 103 | 18.4 | 个人中心样式修复 |  | 2d | 2017-07-15 | 2017-07-17 | 102 |  |  | 14d |  |  | 许胜鹏 | 16h |  |
